How a schedule from an exported table changed from version to version. A marks actual dates.

## Version 1 (saved 2026-11-05)

Note of the change: fixed

| Task | Start | Finish |
| --- | --- | --- |
| Analysis and documentation | 2026-10-26T07:00:00.000Z | 2027-02-10T16:00:00.000Z |
| Domain, requirements, ADRs | 2026-10-26T07:00:00.000Z | 2026-11-06T16:00:00.000Z |
| ProblemSpec v1 and OpenAPI contracts | 2026-11-02T07:00:00.000Z | 2026-11-13T16:00:00.000Z |
| Ongoing documentation (ADRs, specs, logs) – part 1 | 2026-10-26T07:00:00.000Z | 2026-12-23T16:00:00.000Z |
| Ongoing documentation (ADRs, specs, logs) – part 2 | 2027-01-08T07:00:00.000Z | 2027-02-10T16:00:00.000Z |
| Data and AI | 2026-11-09T07:00:00.000Z | 2027-01-29T16:00:00.000Z |
| Instance generator and benchmark converters | 2026-11-09T07:00:00.000Z | 2026-11-20T16:00:00.000Z |
| Dispatcher and EDD / ATC baselines | 2026-11-16T07:00:00.000Z | 2026-11-27T16:00:00.000Z |
| CP-SAT teacher and dataset construction | 2026-11-23T07:00:00.000Z | 2026-12-04T16:00:00.000Z |
| Pilot: first model vs ATC | 2026-11-30T07:00:00.000Z | 2026-12-11T16:00:00.000Z |
| M1 context: duration estimation from logs | 2026-12-07T07:00:00.000Z | 2026-12-23T16:00:00.000Z |
| FastAPI AI service (API, fallback, KPIs) – part 1 | 2026-12-14T07:00:00.000Z | 2026-12-23T16:00:00.000Z |
| FastAPI AI service (API, fallback, KPIs) – part 2 | 2027-01-08T07:00:00.000Z | 2027-01-15T16:00:00.000Z |
| Generalization experiments | 2027-01-08T07:00:00.000Z | 2027-01-29T16:00:00.000Z |
| Backend and DB | 2026-11-09T07:00:00.000Z | 2027-01-29T16:00:00.000Z |
| MySQL schema, entities, Flyway | 2026-11-09T07:00:00.000Z | 2026-11-20T16:00:00.000Z |
| Security and CRUD for configuration / orders | 2026-11-16T07:00:00.000Z | 2026-12-04T16:00:00.000Z |
| Scheduling and AI client (mock first) | 2026-11-30T07:00:00.000Z | 2026-12-23T16:00:00.000Z |
| Decisions, execution, KPIs, audit | 2027-01-08T07:00:00.000Z | 2027-01-22T16:00:00.000Z |
| Public API and CloudEvents events | 2027-01-18T07:00:00.000Z | 2027-01-29T16:00:00.000Z |
| Frontend | 2026-11-09T07:00:00.000Z | 2027-02-03T16:00:00.000Z |
| Mockups and user flows | 2026-11-09T07:00:00.000Z | 2026-11-20T16:00:00.000Z |
| Angular setup, auth, configuration | 2026-11-16T07:00:00.000Z | 2026-12-04T16:00:00.000Z |
| Orders and graph editor | 2026-11-30T07:00:00.000Z | 2026-12-23T16:00:00.000Z |
| Scheduling: Gantt view and review | 2027-01-08T07:00:00.000Z | 2027-01-29T16:00:00.000Z |
| KPI dashboard | 2027-01-25T07:00:00.000Z | 2027-02-03T16:00:00.000Z |
| Integration, evaluation, delivery | 2027-01-18T07:00:00.000Z | 2027-02-09T16:00:00.000Z |
| Docker Compose and end-to-end integration | 2027-01-18T07:00:00.000Z | 2027-01-29T16:00:00.000Z |
| Experimental evaluation and shadow mode | 2027-01-18T07:00:00.000Z | 2027-02-03T16:00:00.000Z |
| Testing and fixes | 2027-01-25T07:00:00.000Z | 2027-02-05T16:00:00.000Z |
| Final documentation review (8 deliverables) | 2027-01-25T07:00:00.000Z | 2027-02-08T16:00:00.000Z |
| Presentation and buffer | 2027-02-03T07:00:00.000Z | 2027-02-09T16:00:00.000Z |
| Milestones | 2026-11-06T07:00:00.000Z | 2027-02-10T16:00:00.000Z |
| TODAY · 6 Nov | 2026-11-06T07:00:00.000Z | 2026-11-06T07:00:00.000Z |
| M0 Validation with the professor | 2026-11-06T16:00:00.000Z | 2026-11-06T16:00:00.000Z |
| M1 Pilot outcome (go / no-go) | 2026-12-11T16:00:00.000Z | 2026-12-11T16:00:00.000Z |
| M2 Minimal end-to-end system | 2026-12-23T16:00:00.000Z | 2026-12-23T16:00:00.000Z |
| M3 Feature freeze | 2027-01-29T16:00:00.000Z | 2027-01-29T16:00:00.000Z |
| M4 Delivery | 2027-02-10T16:00:00.000Z | 2027-02-10T16:00:00.000Z |

## Version 2 (saved 2026-11-17)

Note of the change: fixed gantt

Last finish stays 2027-02-10.

Added:

| Task | Start | Finish |
| --- | --- | --- |
| React setup, auth, configuration | 2026-11-16T07:00:00.000Z | 2026-12-04T16:00:00.000Z |

Removed: Angular setup, auth, configuration
